# Fabricação e Fornecimento do Tanque de Armazenamento TQ-960-30/1 (API 650) – Obra 2026-000037

Schedule from MS Project, 2026-08-17 to 2026-11-24.

## Calendars

- Padrão: Mon-Fri 09:00-12:00, 13:00-18:00; Sat-Sun off.

## Schedule

| ID | WBS | Task | Type | Duration | Start | Finish | Predecessors | Total slack | Free slack | Estimativa Otimista | Indice Criticidade (%) |
| --- | --- | --- | --- | --- | --- | --- | --- | --- | --- | --- | --- |
| 1 | 0 | **Fabricação e Fornecimento do Tanque de Armazenamento TQ-960-30/1 (API 650) – Obra 2026-000037** |  | 1.88d | 2026-08-17 | 2026-08-18 |  | 0d |  |  |  |
| 2 | 1.0 | **1.0 ATIVIDADES (Peso: 2%)** |  | 1.88d | 2026-08-17 | 2026-08-18 |  | 0d |  |  |  |
| 3 | 1.1 | Kick-off Meeting & Alinhamento de Requisitos (Oxiteno S.A. / Grupo Indorama) | milestone | 0d | 2026-08-17 | 2026-08-17 |  | 0d |  | 1 d | 100.0% |
| 4 | 1.2 | Formalização do Termo de Abertura do Projeto (TAP) & Governança |  | 1.88d | 2026-08-17 | 2026-08-18 | 3 | 0d |  | 1 d | 100.0% |
| 5 | 2.0 | **2.0 METODOS E PROCESSOS (Peso: 20%)** |  | 18.5d | 2026-08-18 | 2026-09-14 |  | 0d |  |  |  |
| 6 | 2.1 | Projeto Executivo & Detalhamento Mecânico 2D/3D (TQ-0960-30) |  | 4.88d | 2026-08-18 | 2026-08-25 | 4 | 0d |  | 3 d | 100.0% |
| 7 | 2.2 | Memórias de Cálculo Estrutural e Pressão (API 650 / ASME) |  | 4.88d | 2026-08-25 | 2026-09-01 | 6 | 6d | 0d | 3 d | 0.1% |
| 8 | 2.3 | Elaboração do PIT (Plano de Inspeção e Testes) e EPS/RQPS |  | 3.88d | 2026-09-01 | 2026-09-07 | 7 | 6d | 0d | 2 d | 0.1% |
| 9 | 2.4 | Submissão, Análise e Aprovação Técnica pelo Cliente |  | 4.88d | 2026-09-07 | 2026-09-14 | 8 | 6d |  | 3 d | 0.1% |
| 10 | 3.0 | **3.0 SUPRIMENTOS (Peso: 30%)** |  | 19.62d | 2026-08-25 | 2026-09-22 |  | 0d |  |  |  |
| 11 | 3.1 | Requisição de Compras & Cotação de Matérias-Primas Inox |  | 3.88d | 2026-08-25 | 2026-08-31 | 6 | 0d |  | 2 d | 99.9% |
| 12 | 3.2 | Aquisição de Chapas Inox SA-240 304, Tubos e Flanges |  | 9.88d | 2026-08-31 | 2026-09-14 | 11 | 0d |  | 6 d | 99.9% |
| 13 | 3.3 | Aquisição de Acessórios Aço Carbono, Juntas PTFE e Estojos |  | 4.88d | 2026-08-31 | 2026-09-07 | 11 | 5d |  | 3 d | 0.0% |
| 14 | 3.4 | Recebimento, Inspeção Dimensional e Rastreabilidade de MP |  | 5.88d | 2026-09-14 | 2026-09-22 | 12, 13 | 0d |  | 3 d | 99.9% |
| 15 | 4.0 | **4.0 FABRICAÇÃO E MONTAGEM (Peso: 40%)** |  | 34.12d | 2026-09-22 | 2026-11-09 |  | 0d |  |  |  |
| 16 | 4.1 | Traçado, Corte a Plasma e Chanfro das Chapas do Costado e Fundo |  | 4.88d | 2026-09-22 | 2026-09-29 | 9, 14 | 0d |  | 3 d | 100.0% |
| 17 | 4.2 | Calandragem das Virolas e Pré-Montagem dos Aneis do Costado |  | 4.88d | 2026-09-29 | 2026-10-06 | 16 | 0d |  | 3 d | 100.0% |
| 18 | 4.3 | Soldagem das Juntas Longitudinais e Circunferencias (ASME IX) |  | 6.88d | 2026-10-06 | 2026-10-14 | 17 | 0d |  | 4 d | 100.0% |
| 19 | 4.4 | Montagem e Soldagem do Fundo Plano e Teto Cônico Autoportante |  | 4.88d | 2026-10-15 | 2026-10-21 | 18 | 0d |  | 3 d | 100.0% |
| 20 | 4.5 | Fabricação/Instalação de Bocais A1-W1, Boca de Visita M1 e Guarda-Corpo |  | 4.88d | 2026-10-21 | 2026-10-28 | 19 | 0d |  | 3 d | 100.0% |
| 21 | 4.6 | Execução de Ensaios END (Radiografia RX, LP, Caixa de Vácuo e PMI) |  | 3.88d | 2026-10-28 | 2026-11-03 | 20 | 0d |  | 2 d | 100.0% |
| 22 | 4.7 | Preparação e Execução do Teste Hidrostático (TH) Fabril |  | 3.88d | 2026-11-03 | 2026-11-09 | 21 | 0d |  | 2 d | 100.0% |
| 23 | 5.0 | **5.0 PINTURA (Peso: 7%)** |  | 5.75d | 2026-11-09 | 2026-11-17 |  | 0d |  |  |  |
| 24 | 5.1 | Decapagem Química e Passivação Integral das Superfícies em Aço Inox |  | 2.88d | 2026-11-09 | 2026-11-12 | 22 | 0d |  | 1 d | 100.0% |
| 25 | 5.2 | Jateamento e Pintura Externa dos Acessórios em Aço Carbono (Munsell 5Y 8/12) |  | 2.88d | 2026-11-12 | 2026-11-17 | 24 | 0d |  | 1 d | 100.0% |

Notes:
- 1: CRONOGRAMA GERADO POR PIPELINE INTELIGENTE COM EAP PADRONIZADA. / Análise de Monte Carlo (20.000 simulações): / Prazo P50: 63.6 dias úteis / P90: 67.5 dias úteis / Probabilidade de cumprimento do prazo contratual: 99.4% / Buffer de contingência sugerido: 3.9 dias úteis / Custo Médio Estimado: R$ 419.0k (Contingência P80-P50: R$ 21.4k) / Text1/2/3 = Estimativas Otimista/Provável/Pessimista / Text4 = Índice de Criticidade (%) / Text5 = Pacote WBS.
- 3: Estimativas de 3 Pontos: Otimista = 1d / Provável = 1d / Pessimista = 2d. / Índice de Criticidade (Monte Carlo): 100.0% das 20.000 iterações no Caminho Crítico.
- 4: Estimativas de 3 Pontos: Otimista = 1d / Provável = 1d / Pessimista = 2d. / Índice de Criticidade (Monte Carlo): 100.0% das 20.000 iterações no Caminho Crítico.
- 6: Estimativas de 3 Pontos: Otimista = 3d / Provável = 4d / Pessimista = 6d. / Índice de Criticidade (Monte Carlo): 100.0% das 20.000 iterações no Caminho Crítico.
- 7: Estimativas de 3 Pontos: Otimista = 3d / Provável = 4d / Pessimista = 6d. / Índice de Criticidade (Monte Carlo): 0.1% das 20.000 iterações no Caminho Crítico.
- 8: Estimativas de 3 Pontos: Otimista = 2d / Provável = 3d / Pessimista = 5d. / Índice de Criticidade (Monte Carlo): 0.1% das 20.000 iterações no Caminho Crítico.
- 9: Estimativas de 3 Pontos: Otimista = 3d / Provável = 4d / Pessimista = 6d. / Índice de Criticidade (Monte Carlo): 0.1% das 20.000 iterações no Caminho Crítico.
- 11: Estimativas de 3 Pontos: Otimista = 2d / Provável = 3d / Pessimista = 5d. / Índice de Criticidade (Monte Carlo): 99.9% das 20.000 iterações no Caminho Crítico.
- 12: Estimativas de 3 Pontos: Otimista = 6d / Provável = 9d / Pessimista = 14d. / Índice de Criticidade (Monte Carlo): 99.9% das 20.000 iterações no Caminho Crítico.
- 13: Estimativas de 3 Pontos: Otimista = 3d / Provável = 4d / Pessimista = 6d. / Índice de Criticidade (Monte Carlo): 0.0% das 20.000 iterações no Caminho Crítico.
- 14: Estimativas de 3 Pontos: Otimista = 3d / Provável = 5d / Pessimista = 8d. / Índice de Criticidade (Monte Carlo): 99.9% das 20.000 iterações no Caminho Crítico.
- 16: Estimativas de 3 Pontos: Otimista = 3d / Provável = 4d / Pessimista = 6d. / Índice de Criticidade (Monte Carlo): 100.0% das 20.000 iterações no Caminho Crítico.
- 17: Estimativas de 3 Pontos: Otimista = 3d / Provável = 4d / Pessimista = 6d. / Índice de Criticidade (Monte Carlo): 100.0% das 20.000 iterações no Caminho Crítico.
- 18: Estimativas de 3 Pontos: Otimista = 4d / Provável = 6d / Pessimista = 9d. / Índice de Criticidade (Monte Carlo): 100.0% das 20.000 iterações no Caminho Crítico.
- 19: Estimativas de 3 Pontos: Otimista = 3d / Provável = 4d / Pessimista = 6d. / Índice de Criticidade (Monte Carlo): 100.0% das 20.000 iterações no Caminho Crítico.
- 20: Estimativas de 3 Pontos: Otimista = 3d / Provável = 4d / Pessimista = 6d. / Índice de Criticidade (Monte Carlo): 100.0% das 20.000 iterações no Caminho Crítico.
- 21: Estimativas de 3 Pontos: Otimista = 2d / Provável = 3d / Pessimista = 5d. / Índice de Criticidade (Monte Carlo): 100.0% das 20.000 iterações no Caminho Crítico.
- 22: Estimativas de 3 Pontos: Otimista = 2d / Provável = 3d / Pessimista = 5d. / Índice de Criticidade (Monte Carlo): 100.0% das 20.000 iterações no Caminho Crítico.
- 24: Estimativas de 3 Pontos: Otimista = 1d / Provável = 2d / Pessimista = 3d. / Índice de Criticidade (Monte Carlo): 100.0% das 20.000 iterações no Caminho Crítico.
- 25: Estimativas de 3 Pontos: Otimista = 1d / Provável = 2d / Pessimista = 3d. / Índice de Criticidade (Monte Carlo): 100.0% das 20.000 iterações no Caminho Crítico.

| ID | WBS | Task | Duration | Start | Finish | Predecessors | Total slack | Estimativa Otimista | Indice Criticidade (%) |
| --- | --- | --- | --- | --- | --- | --- | --- | --- | --- |
| 26 | 6.0 | **6.0 EXPEDIÇÃO (Peso: 1%)** | 5.62d | 2026-11-17 | 2026-11-24 |  | 0d |  |  |
| 27 | 6.1 | Emissão, Compilação e Aprovação do Data Book Final com ART (SOP-BRA-019-01) | 1.88d | 2026-11-17 | 2026-11-19 | 22, 25 | 0d | 1 d | 100.0% |
| 28 | 6.2 | Embalagem Especial, Fabricação do Berço e Carregamento | 1.88d | 2026-11-19 | 2026-11-20 | 27 | 0d | 1 d | 100.0% |
| 29 | 6.3 | Transporte Rodoviário Especial CIF e Entrega Técnica no Polo Camaçari/BA | 1.88d | 2026-11-23 | 2026-11-24 | 28 | 0d | 1 d | 100.0% |

Notes:
- 27: Estimativas de 3 Pontos: Otimista = 1d / Provável = 1d / Pessimista = 2d. / Índice de Criticidade (Monte Carlo): 100.0% das 20.000 iterações no Caminho Crítico.
- 28: Estimativas de 3 Pontos: Otimista = 1d / Provável = 1d / Pessimista = 2d. / Índice de Criticidade (Monte Carlo): 100.0% das 20.000 iterações no Caminho Crítico.
- 29: Estimativas de 3 Pontos: Otimista = 1d / Provável = 1d / Pessimista = 2d. / Índice de Criticidade (Monte Carlo): 100.0% das 20.000 iterações no Caminho Crítico.
