# Fabricacao 2 trocadores de calor - REPLAN (ASME)

Schedule from MS Project XML, 2026-08-17 to 2026-10-12.

## Schedule

| ID | WBS | Task | Duration | Start | Finish | Predecessors | Otimista (dias) | Provavel (dias) | Pessimista (dias) |
| --- | --- | --- | --- | --- | --- | --- | --- | --- | --- |
| 1 | 1 | **Fabricacao 2 trocadores de calor - REPLAN (ASME)** | 56d | 2026-08-17 | 2026-10-12 |  |  |  |  |
| 2 | 1.1 | Detalhamento / desenhos de fabricacao | 5d | 2026-08-17 | 2026-08-24 |  | 3 | 5 | 10 |
| 3 | 1.2 | Compra de materiais (casco, espelhos, tubos) | 10d | 2026-08-25 | 2026-09-08 | 2 | 5 | 10 | 25 |
| 4 | 1.3 | Corte e chanfro das chapas | 4d | 2026-09-09 | 2026-09-15 | 3 | 2 | 4 | 8 |
| 5 | 1.4 | Calandragem do casco | 2d | 2026-09-16 | 2026-09-18 | 4 | 1 | 2 | 4 |
| 6 | 1.5 | Montagem do feixe tubular (expansao) | 6d | 2026-09-09 | 2026-09-17 | 3 | 3 | 6 | 12 |
| 7 | 1.6 | Soldagem das juntas do casco (ASME IX) | 4d | 2026-09-21 | 2026-09-25 | 5 | 2 | 4 | 9 |
| 8 | 1.7 | Montagem final + cabecotes | 4d | 2026-09-28 | 2026-10-02 | 6, 7 | 2 | 4 | 7 |
| 9 | 1.8 | Teste hidrostatico + inspecao (ASME VIII) | 2d | 2026-10-05 | 2026-10-07 | 8 | 1 | 2 | 5 |
| 10 | 1.9 | Pintura e entrega | 2d | 2026-10-08 | 2026-10-12 | 9 | 1 | 2 | 4 |

Notes:
- 1: Tarefa resumo gerada automaticamente.
- 2: Estimativas (dias): otimista 3 / provavel 5 / pessimista 10. Criticidade no MC: 100%
- 3: Estimativas (dias): otimista 5 / provavel 10 / pessimista 25. Criticidade no MC: 100%
- 4: Estimativas (dias): otimista 2 / provavel 4 / pessimista 8. Criticidade no MC: 96%
- 5: Estimativas (dias): otimista 1 / provavel 2 / pessimista 4. Criticidade no MC: 96%
- 6: Estimativas (dias): otimista 3 / provavel 6 / pessimista 12. Criticidade no MC: 4%
- 7: Estimativas (dias): otimista 2 / provavel 4 / pessimista 9. Criticidade no MC: 96%
- 8: Estimativas (dias): otimista 2 / provavel 4 / pessimista 7. Criticidade no MC: 100%
- 9: Estimativas (dias): otimista 1 / provavel 2 / pessimista 5. Criticidade no MC: 100%
- 10: Estimativas (dias): otimista 1 / provavel 2 / pessimista 4. Criticidade no MC: 100%
